# Planificación

Schedule from MS Project, 2014-03-18 to 2015-04-18, A marks actual dates.

## Calendars

- Estándar: Mon-Sun 09:00-13:00, 15:00-19:00. Exceptions (off unless hours are given): 2014-06-28 09:00-13:00, 15:00-19:00, 2014-10-25 09:00-13:00, 15:00-19:00, 2014-11-29 09:00-13:00, 15:00-19:00, 2015-01-03 09:00-13:00, 15:00-19:00, 2015-01-10 09:00-13:00, 15:00-19:00, 2015-02-14 09:00-13:00, 15:00-19:00.

## Resources

| Resource |
| --- |
| Facu |
| Paula |
| Florencia |
| Antonio |

## Schedule

| ID | WBS | Task | Type | Duration | Start | Finish | Predecessors | Complete | Remaining | Total slack | Constraint | Resources | Work | Actual work |
| --- | --- | --- | --- | --- | --- | --- | --- | --- | --- | --- | --- | --- | --- | --- |
| 1 | 1 | **Sprint 0** |  | 78d | 2014-03-18 A | 2014-06-03 |  | 89% | 8.34d | 0d |  |  | 5800h | 4770.39h |
| 2 | 1.1 | **Realizar Propuesta Inicial** |  | 22d | 2014-03-18 A | 2014-04-08 A |  | 100% |  |  |  | Antonio; Facu; Florencia; Paula | 1344h | 1344h |
| 3 | 1.1.1 | Analizar la problematica y su contexto | manual | 7d | 2014-03-18 A | 2014-03-26 A |  | 100% |  |  | start no earlier than 2014-03-31 | Antonio; Facu; Florencia; Paula | 224h | 224h |
| 4 | 1.1.2 | Analizar viabilidad del proyecto | manual | 7d | 2014-03-18 A | 2014-03-26 A |  | 100% |  |  | start no earlier than 2014-03-31 | Antonio; Facu; Florencia; Paula | 224h | 224h |
| 5 | 1.1.3 | Definir propuesta de solucion | manual | 7d | 2014-03-18 A | 2014-03-26 A |  | 100% |  |  | start no earlier than 2014-03-31 | Antonio; Facu; Florencia; Paula | 224h | 224h |
| 6 | 1.1.4 | Preparar presentación | manual | 4d | 2014-03-31 A | 2014-04-03 A | 3, 4, 5 | 100% |  |  |  | Antonio; Facu; Florencia; Paula | 128h | 128h |
| 7 | 1.1.5 | Exponer | manual | 1d | 2014-04-08 A | 2014-04-08 A |  | 100% |  |  |  | Antonio; Facu; Florencia; Paula | 32h | 32h |
| 8 | 1.2 | **Realizar Calendarización** |  | 17d | 2014-04-15 A | 2014-05-07 A |  | 100% |  |  |  | Antonio; Facu; Florencia; Paula | 920h | 920h |
| 9 | 1.2.1 | Armar WBS | manual | 7d | 2014-04-15 A | 2014-04-23 A |  | 100% |  |  |  | Antonio; Facu; Florencia; Paula | 224h | 224h |
| 10 | 1.2.2 | Correccion WBS |  | 2d | 2014-04-24 A | 2014-04-25 A | 9 | 100% |  |  |  | Antonio; Facu; Florencia; Paula | 64h | 64h |
| 11 | 1.2.3 | Armar calendario | manual | 7d | 2014-04-28 A | 2014-05-06 A | 10 | 100% |  |  |  | Antonio; Facu; Florencia; Paula | 224h | 224h |
| 12 | 1.3 | **Realizar Estudio Inicial** |  | 32d | 2014-04-08 A | 2014-05-09 | 2 | 99% | 0d | 0d |  | Antonio; Facu; Florencia; Paula | 2080h | 1376h |
| 13 | 1.3.1 | Analizar la problematica y su contexto |  | 14d | 2014-04-09 A | 2014-04-28 A |  | 100% |  |  |  | Antonio; Facu; Florencia; Paula | 448h | 448h |
| 14 | 1.3.2 | Analizar soluciones existentes en el mercado |  | 2d | 2014-04-09 A | 2014-04-10 A |  | 100% |  |  |  | Antonio; Facu; Florencia; Paula | 64h | 64h |
| 15 | 1.3.3 | Definir alcances |  | 7d | 2014-04-09 A | 2014-04-17 A |  | 100% |  |  |  | Antonio; Facu; Florencia; Paula | 224h | 224h |
| 16 | 1.3.4 | Realizar analisis de Factibilidad | manual | 1d | 2014-04-08 A | 2014-04-09 A |  | 100% |  |  |  | Antonio; Facu; Florencia; Paula | 32h | 32h |
| 17 | 1.3.5 | Realizar Encuestas |  | 10d | 2014-04-28 A | 2014-05-09 A |  | 100% |  |  | finish no earlier than 2014-05-09 | Antonio; Facu; Florencia; Paula | 320h | 320h |
| 18 | 1.3.6 | Estudiar dominio | manual | 7d | 2014-04-08 A | 2014-04-16 A |  | 100% |  |  |  | Antonio; Facu; Florencia; Paula | 224h | 224h |
| 19 | 1.4 | Realizar plan de configuración | manual | 7d | 2014-05-07 A | 2014-05-13 |  | 90% | 0.7d |  |  | Florencia | 56h | 50.4h |
| 20 | 1.5 | **Realizar Plan de Riesgos** |  | 8d | 2014-05-13 A | 2014-05-20 A |  | 100% |  |  |  | Facu | 104h | 104h |
| 21 | 1.5.1 | Identificar, clasificar y priorizar riesgos | manual | 3d | 2014-05-13 A | 2014-05-15 A |  | 100% |  |  |  | Facu | 24h | 24h |
| 22 | 1.5.2 | Realizar plan mitigación | manual | 2d | 2014-05-16 A | 2014-05-19 A | 21 | 100% |  |  |  | Facu | 16h | 16h |
| 23 | 1.5.3 | Realizar plan de contingencia | manual | 2d | 2014-05-16 A | 2014-05-19 A | 21 | 100% |  |  |  | Facu | 16h | 16h |
| 24 | 1.6 | **Realizar Plan de Métricas** |  | 7d | 2014-05-20 A | 2014-05-26 A |  | 100% |  |  |  | Paula | 168h | 168h |
| 25 | 1.6.1 | Identificar metricas | manual | 7d | 2014-05-20 A | 2014-05-26 A |  | 100% |  |  |  | Paula | 56h | 56h |
| 26 | 1.6.2 | Definir responsables y método de medicion | manual | 7d | 2014-05-20 A | 2014-05-26 A |  | 100% |  |  |  | Paula | 56h | 56h |

| ID | WBS | Task | Type | Duration | Start | Finish | Predecessors | Complete | Remaining | Actual finish | Total slack | Constraint | Resources | Work | Actual work |
| --- | --- | --- | --- | --- | --- | --- | --- | --- | --- | --- | --- | --- | --- | --- | --- |
| 27 | 1.7 | **Realizar Plan de Testing** |  | 9d | 2014-05-20 A | 2014-05-28 A |  | 100% |  |  |  |  | Paula; Florencia | 232h | 232h |
| 28 | 1.7.1 | Definir tipos de pruebas |  | 7d | 2014-05-20 A | 2014-05-28 A |  | 100% |  |  |  |  | Paula | 56h | 56h |
| 29 | 1.7.2 | Definir estrategia de prueba |  | 7d | 2014-05-20 A | 2014-05-28 A |  | 100% |  |  |  |  | Paula | 56h | 56h |
| 30 | 1.7.3 | Definir nivel de cobertura |  | 7d | 2014-05-20 A | 2014-05-28 A |  | 100% |  |  |  |  | Paula | 56h | 56h |
| 31 | 1.7.4 | Correcciones | manual | 1d | 2014-05-24 A | 2014-05-24 A |  | 100% |  |  |  |  | Florencia | 8h | 8h |
| 32 | 1.8 | Analizar Impacto Ambiental | manual | 7d | 2014-05-20 | 2014-05-26 |  |  |  |  |  |  | Antonio; Facu; Florencia; Paula | 224h |  |
| 33 | 1.9 | **Realizar Presentación de Estudio Inicial** |  | 7d | 2014-05-19 A | 2014-05-25 | 12 | 100% |  | 2014-05-27 |  |  | Antonio; Facu; Florencia; Paula | 448h | 448h |
| 34 | 1.9.1 | Preparar presentación |  | 3d | 2014-05-19 A | 2014-05-21 A |  | 100% |  |  |  |  | Antonio; Facu; Florencia; Paula | 96h | 96h |
| 35 | 1.9.2 | Elaborar presentación |  | 3d | 2014-05-22 A | 2014-05-24 A | 34 | 100% |  |  |  |  | Antonio; Facu; Florencia; Paula | 96h | 96h |
| 36 | 1.9.3 | Exponer |  | 1d | 2014-05-27 A | 2014-05-27 A |  | 100% |  |  |  | start no earlier than 2014-05-27 | Antonio; Facu; Florencia; Paula | 32h | 32h |
| 37 | 1.10 | **Preparar Product Backlog** |  | 6d | 2014-05-29 A | 2014-06-03 | 33, 32, 27, 24 | 30% | 4.2d |  |  |  | Antonio; Paula | 96h | 19.2h |
| 38 | 1.10.1 | Identificar historias de usuario |  | 4d | 2014-05-29 A | 2014-06-01 |  | 30% | 2.8d |  | 2d |  |  |  |  |
| 39 | 1.10.2 | Priorizar historias de usuario |  | 4d | 2014-05-29 A | 2014-06-01 |  | 30% | 2.8d |  | 2d |  |  |  |  |
| 40 | 1.10.3 | Estimar historias de usuario |  | 4d | 2014-05-29 A | 2014-06-01 |  | 30% | 2.8d |  | 2d |  |  |  |  |
| 41 | 1.11 | **Realizar ERS** |  | 3d | 2014-05-29 A | 2014-05-31 | 33, 32, 27, 24 | 80% | 0.6d |  | 0d |  | Antonio; Facu; Florencia; Paula | 96h | 76.79h |
| 42 | 1.11.1 | Entrevistar expertos en dominio |  | 3d | 2014-05-29 A | 2014-05-31 |  | 80% | 0.6d |  | 0d |  |  |  |  |
| 43 | 1.11.2 | Identificar funcionalidades |  | 3d | 2014-05-29 A | 2014-05-31 |  | 80% | 0.6d |  | 0d |  |  |  |  |
| 44 | 1.11.3 | Especificar funcionalidades |  | 3d | 2014-05-29 A | 2014-05-31 |  | 80% | 0.6d |  | 0d |  |  |  |  |
| 45 | 1.11.4 | Definir reglas de negocio |  | 3d | 2014-05-29 A | 2014-05-31 |  | 80% | 0.6d |  | 0d |  |  |  |  |
| 46 | 1.12 | **Definir Metodología y Herramientas de Trabajo** |  | 1d | 2014-06-01 A | 2014-06-01 A | 41 | 100% |  |  |  |  | Antonio; Facu; Florencia; Paula | 32h | 32h |
| 47 | 1.12.1 | Definir y preparar entorno de trabajo |  | 1d | 2014-06-01 A | 2014-06-01 A |  | 100% |  |  |  |  |  |  |  |
| 48 | 1.12.2 | Definir ciclo de vida del sw |  | 1d | 2014-06-01 A | 2014-06-01 A |  | 100% |  |  |  |  |  |  |  |
| 49 | 2 | **Sprint 1** |  | 22d | 2014-06-07 | 2014-06-28 | 1 |  |  |  |  |  |  |  |  |
| 50 | 2.1 | Realizar Sprint Planning | manual | 1d? | 2014-06-07 | 2014-06-07 |  |  |  |  |  |  |  |  |  |
| 51 | 2.2 | Investigar tecnologías de desarrollo | manual | 1d? | 2014-06-07 | 2014-06-07 |  |  |  |  |  |  |  |  |  |
| 52 | 2.3 | Investigar Algoritmos de Generación de fixture | manual | 1d? | 2014-06-07 | 2014-06-07 |  |  |  |  |  |  |  |  |  |
| 53 | 2.4 | Analizar y Especificar los requerimientos | manual | 1d? | 2014-06-07 | 2014-06-07 |  |  |  |  |  |  |  |  |  |

| ID | WBS | Task | Type | Duration | Start | Finish | Predecessors | Total slack | Free slack | Constraint |
| --- | --- | --- | --- | --- | --- | --- | --- | --- | --- | --- |
| 54 | 2.5 | **Diseñar Solución** |  | 1d? | 2014-06-07 | 2014-06-07 |  |  |  |  |
| 55 | 2.5.1 | Actualizar modelos existentes | manual | 1d? | 2014-06-07 | 2014-06-07 |  |  |  |  |
| 56 | 2.5.2 | Crear nuevos modelos | manual | 1d | 2014-06-07 | 2014-06-07 |  |  |  |  |
| 57 | 2.6 | Desarrollar | manual | 1d | 2014-06-07 | 2014-06-07 |  |  |  |  |
| 58 | 2.7 | Testear | manual | 1d? | 2014-06-07 | 2014-06-07 |  |  |  |  |
| 59 | 2.8 | Implementar | manual | 1d? | 2014-06-07 | 2014-06-07 |  |  |  |  |
| 60 | 2.9 | Gestionar cambios | manual | 1d? | 2014-06-07 | 2014-06-07 |  |  |  |  |
| 61 | 2.10 | Realizar seguimiento y control de riesgos | manual | 1d? | 2014-06-07 | 2014-06-07 |  |  |  |  |
| 62 | 2.11 | Realizar Sprint Review | manual | 1d? | 2014-06-07 | 2014-06-07 |  |  |  |  |
| 63 | 3 | Realizar reunión retrospectiva |  | 1d | 2014-06-28 | 2014-06-28 |  | -1d | 0d | start no earlier than 2014-06-28 |
| 64 | 4 | **Sprint 2** |  | 22d | 2014-06-28 | 2014-07-19 | 63 |  |  |  |
| 65 | 4.1 | Realizar Sprint Planning | manual | 1d? | 2014-06-28 | 2014-06-28 |  |  |  |  |
| 66 | 4.2 | Analizar y Especificar los requerimientos | manual | 1d? | 2014-06-28 | 2014-06-28 |  |  |  |  |
| 67 | 4.3 | **Diseñar Solución** |  | 1d? | 2014-06-28 | 2014-06-28 |  |  |  |  |
| 68 | 4.3.1 | Actualizar modelos existentes | manual | 1d | 2014-06-28 | 2014-06-28 |  |  |  |  |
| 69 | 4.3.2 | Crear nuevos modelos | manual | 1d | 2014-06-28 | 2014-06-28 |  |  |  |  |
| 70 | 4.4 | Desarrollar | manual | 1d | 2014-06-28 | 2014-06-28 |  |  |  |  |
| 71 | 4.5 | Testear | manual | 1d | 2014-06-28 | 2014-06-28 |  |  |  |  |
| 72 | 4.6 | Implementar | manual | 1d | 2014-06-28 | 2014-06-28 |  |  |  |  |
| 73 | 4.7 | Gestionar cambios | manual | 1d | 2014-06-28 | 2014-06-28 |  |  |  |  |
| 74 | 4.8 | Realizar seguimiento y control de riesgos | manual | 1d | 2014-06-28 | 2014-06-28 |  |  |  |  |
| 75 | 4.9 | Realizar Sprint Review | manual | 1d | 2014-06-28 | 2014-06-28 |  |  |  |  |
| 76 | 5 | Realizar reunión retrospectiva |  | 1d | 2014-07-19 | 2014-07-19 |  | -1d | 0d | start no earlier than 2014-07-19 |
| 77 | 6 | **Sprint 3** |  | 22d | 2014-07-19 | 2014-08-09 | 76 |  |  |  |
| 78 | 6.1 | Realizar Sprint Planning | manual | 1d | 2014-07-19 | 2014-07-19 |  |  |  |  |
| 79 | 6.2 | Analizar y Especificar los requerimientos | manual | 1d | 2014-07-19 | 2014-07-19 |  |  |  |  |

| ID | WBS | Task | Type | Duration | Start | Finish | Predecessors | Total slack | Free slack | Constraint |
| --- | --- | --- | --- | --- | --- | --- | --- | --- | --- | --- |
| 80 | 6.3 | **Diseñar Solución** |  | 1d? | 2014-07-19 | 2014-07-19 |  |  |  |  |
| 81 | 6.3.1 | Actualizar modelos existentes | manual | 1d | 2014-07-19 | 2014-07-19 |  |  |  |  |
| 82 | 6.3.2 | Crear nuevos modelos | manual | 1d | 2014-07-19 | 2014-07-19 |  |  |  |  |
| 83 | 6.4 | Desarrollar | manual | 1d | 2014-07-19 | 2014-07-19 |  |  |  |  |
| 84 | 6.5 | Testear | manual | 1d | 2014-07-19 | 2014-07-19 |  |  |  |  |
| 85 | 6.6 | Implementar | manual | 1d | 2014-07-19 | 2014-07-19 |  |  |  |  |
| 86 | 6.7 | Gestionar cambios | manual | 1d | 2014-07-19 | 2014-07-19 |  |  |  |  |
| 87 | 6.8 | Realizar seguimiento y control de riesgos | manual | 1d | 2014-07-19 | 2014-07-19 |  |  |  |  |
| 88 | 6.9 | Realizar Sprint Review | manual | 1d | 2014-07-19 | 2014-07-19 |  |  |  |  |
| 89 | 7 | Realizar reunión retrospectiva |  | 1d | 2014-08-09 | 2014-08-09 |  | 0d |  | start no earlier than 2014-08-09 |
| 90 | 8 | **Sprint 4** |  | 21d | 2014-08-09 | 2014-08-30 | 89 |  |  |  |
| 91 | 8.1 | Realizar Sprint Planning | manual | 1d | 2014-08-09 | 2014-08-10 |  |  |  |  |
| 92 | 8.2 | Analizar y Especificar los requerimientos | manual | 1d | 2014-08-09 | 2014-08-10 |  |  |  |  |
| 93 | 8.3 | **Diseñar Solución** |  | 3d? | 2014-08-09 | 2014-08-12 |  |  |  |  |
| 94 | 8.3.1 | Actualizar modelos existentes | manual | 1d | 2014-08-09 | 2014-08-10 |  |  |  |  |
| 95 | 8.3.2 | Crear nuevos modelos | manual | 1d | 2014-08-09 | 2014-08-10 |  |  |  |  |
| 96 | 8.4 | Desarrollar | manual | 1d | 2014-08-09 | 2014-08-10 |  |  |  |  |
| 97 | 8.5 | Testear | manual | 1d | 2014-08-09 | 2014-08-10 |  |  |  |  |
| 98 | 8.6 | Implementar | manual | 1d | 2014-08-09 | 2014-08-10 |  |  |  |  |
| 99 | 8.7 | Gestionar cambios | manual | 1d | 2014-08-09 | 2014-08-10 |  |  |  |  |
| 100 | 8.8 | Realizar seguimiento y control de riesgos | manual | 1d | 2014-08-09 | 2014-08-10 |  |  |  |  |
| 101 | 8.9 | Realizar Sprint Review | manual | 1d | 2014-08-09 | 2014-08-10 |  |  |  |  |
| 102 | 9 | Realizar reunión retrospectiva |  | 1d | 2014-10-25 | 2014-10-25 |  | -57d | 0d | start no earlier than 2014-10-25 |
| 103 | 10 | **Sprint 5** |  | 22d | 2014-08-30 | 2014-09-20 | 102 |  |  |  |
| 104 | 10.1 | Realizar Sprint Planning | manual | 1d | 2014-08-30 | 2014-08-30 |  |  |  |  |
| 105 | 10.2 | Analizar y Especificar los requerimientos | manual | 1d | 2014-08-30 | 2014-08-30 |  |  |  |  |

| ID | WBS | Task | Type | Duration | Start | Finish | Predecessors | Total slack | Free slack | Constraint |
| --- | --- | --- | --- | --- | --- | --- | --- | --- | --- | --- |
| 106 | 10.3 | **Diseñar Solución** |  | 2d? | 2014-08-30 | 2014-08-31 |  |  |  |  |
| 107 | 10.3.1 | Actualizar modelos existentes | manual | 1d | 2014-08-30 | 2014-08-30 |  |  |  |  |
| 108 | 10.3.2 | Crear nuevos modelos | manual | 1d | 2014-08-30 | 2014-08-30 |  |  |  |  |
| 109 | 10.4 | Desarrollar | manual | 1d | 2014-08-30 | 2014-08-30 |  |  |  |  |
| 110 | 10.5 | Testear | manual | 1d | 2014-08-30 | 2014-08-30 |  |  |  |  |
| 111 | 10.6 | Implementar | manual | 1d | 2014-08-30 | 2014-08-30 |  |  |  |  |
| 112 | 10.7 | Gestionar cambios | manual | 1d | 2014-08-30 | 2014-08-30 |  |  |  |  |
| 113 | 10.8 | Realizar seguimiento y control de riesgos | manual | 1d | 2014-08-30 | 2014-08-30 |  |  |  |  |
| 114 | 10.9 | Realizar Sprint Review | manual | 1d | 2014-08-30 | 2014-08-30 |  |  |  |  |
| 115 | 11 | Realizar reunión retrospectiva |  | 1d | 2014-11-29 | 2014-11-29 |  | -71d | 0d | start no earlier than 2014-11-29 |
| 116 | 12 | **Sprint 6** |  | 22d | 2014-09-20 | 2014-10-11 | 115 |  |  |  |
| 117 | 12.1 | Realizar Sprint Planning | manual | 1d | 2014-09-20 | 2014-09-20 |  |  |  |  |
| 118 | 12.2 | Analizar y Especificar los requerimientos | manual | 1d | 2014-09-20 | 2014-09-20 |  |  |  |  |
| 119 | 12.3 | **Diseñar Solución** |  | 2d? | 2014-09-20 | 2014-09-21 |  |  |  |  |
| 120 | 12.3.1 | Actualizar modelos existentes | manual | 1d | 2014-09-20 | 2014-09-20 |  |  |  |  |
| 121 | 12.3.2 | Crear nuevos modelos | manual | 1d | 2014-09-20 | 2014-09-20 |  |  |  |  |
| 122 | 12.4 | Desarrollar | manual | 1d | 2014-09-20 | 2014-09-20 |  |  |  |  |
| 123 | 12.5 | Testear | manual | 1d | 2014-09-20 | 2014-09-20 |  |  |  |  |
| 124 | 12.6 | Implementar | manual | 1d | 2014-09-20 | 2014-09-20 |  |  |  |  |
| 125 | 12.7 | Gestionar cambios | manual | 1d | 2014-09-20 | 2014-09-20 |  |  |  |  |
| 126 | 12.8 | Realizar seguimiento y control de riesgos | manual | 1d | 2014-09-20 | 2014-09-20 |  |  |  |  |
| 127 | 12.9 | Realizar Sprint Review | manual | 1d | 2014-09-20 | 2014-09-20 |  |  |  |  |
| 128 | 13 | Realizar reunión retrospectiva |  | 1d | 2015-01-03 | 2015-01-03 |  | -85d | 0d | start no earlier than 2015-01-03 |
| 129 | 14 | **Sprint 7** |  | 22d | 2014-10-11 | 2014-11-01 | 128 |  |  |  |
| 130 | 14.1 | Realizar Sprint Planning | manual | 1d | 2014-10-11 | 2014-10-11 |  |  |  |  |
| 131 | 14.2 | Analizar y Especificar los requerimientos | manual | 1d | 2014-10-11 | 2014-10-11 |  |  |  |  |

| ID | WBS | Task | Type | Duration | Start | Finish | Predecessors | Total slack | Free slack | Constraint |
| --- | --- | --- | --- | --- | --- | --- | --- | --- | --- | --- |
| 132 | 14.3 | **Diseñar Solución** |  | 2d? | 2014-10-11 | 2014-10-12 |  |  |  |  |
| 133 | 14.3.1 | Actualizar modelos existentes | manual | 1d | 2014-10-11 | 2014-10-11 |  |  |  |  |
| 134 | 14.3.2 | Crear nuevos modelos | manual | 1d | 2014-10-11 | 2014-10-11 |  |  |  |  |
| 135 | 14.4 | Desarrollar | manual | 1d | 2014-10-11 | 2014-10-11 |  |  |  |  |
| 136 | 14.5 | Testear | manual | 1d | 2014-10-11 | 2014-10-11 |  |  |  |  |
| 137 | 14.6 | Implementar | manual | 1d | 2014-10-11 | 2014-10-11 |  |  |  |  |
| 138 | 14.7 | Gestionar cambios | manual | 1d | 2014-10-11 | 2014-10-11 |  |  |  |  |
| 139 | 14.8 | Realizar seguimiento y control de riesgos | manual | 1d | 2014-10-11 | 2014-10-11 |  |  |  |  |
| 140 | 14.9 | Realizar Sprint Review | manual | 1d | 2014-10-11 | 2014-10-11 |  |  |  |  |
| 141 | 15 | Realizar reunión retrospectiva |  | 1d | 2015-01-10 | 2015-01-10 |  | -71d | 0d | start no earlier than 2015-01-10 |
| 142 | 16 | **Sprint 8** |  | 22d | 2014-11-01 | 2014-11-22 | 141 |  |  |  |
| 143 | 16.1 | Realizar Sprint Planning | manual | 1d | 2014-11-01 | 2014-11-01 |  |  |  |  |
| 144 | 16.2 | Analizar y Especificar los requerimientos | manual | 1d | 2014-11-01 | 2014-11-01 |  |  |  |  |
| 145 | 16.3 | **Diseñar Solución** |  | 1d? | 2014-11-01 | 2014-11-01 |  |  |  |  |
| 146 | 16.3.1 | Actualizar modelos existentes | manual | 1d | 2014-11-01 | 2014-11-01 |  |  |  |  |
| 147 | 16.3.2 | Crear nuevos modelos | manual | 1d | 2014-11-01 | 2014-11-01 |  |  |  |  |
| 148 | 16.4 | Desarrollar | manual | 1d | 2014-11-01 | 2014-11-01 |  |  |  |  |
| 149 | 16.5 | Testear | manual | 1d | 2014-11-01 | 2014-11-01 |  |  |  |  |
| 150 | 16.6 | Implementar | manual | 1d | 2014-11-01 | 2014-11-01 |  |  |  |  |
| 151 | 16.7 | Gestionar cambios | manual | 1d | 2014-11-01 | 2014-11-01 |  |  |  |  |
| 152 | 16.8 | Realizar seguimiento y control de riesgos | manual | 1d | 2014-11-01 | 2014-11-01 |  |  |  |  |
| 153 | 16.9 | Realizar Sprint Review | manual | 1d | 2014-11-01 | 2014-11-01 |  |  |  |  |
| 154 | 17 | Realizar reunión retrospectiva |  | 1d | 2015-03-11 | 2015-03-11 | 142 | -110d | 0d | start no earlier than 2015-03-11 |
| 155 | 18 | **Sprint 9** |  | 22d | 2014-11-22 | 2014-12-13 | 154 |  |  |  |
| 156 | 18.1 | Realizar Sprint Planning | manual | 1d | 2014-11-22 | 2014-11-22 |  |  |  |  |
| 157 | 18.2 | Analizar y Especificar los requerimientos | manual | 1d | 2014-11-22 | 2014-11-22 |  |  |  |  |

| ID | WBS | Task | Type | Duration | Start | Finish | Predecessors | Total slack | Free slack | Constraint |
| --- | --- | --- | --- | --- | --- | --- | --- | --- | --- | --- |
| 158 | 18.3 | **Diseñar Solución** |  | 1d? | 2014-11-22 | 2014-11-22 |  |  |  |  |
| 159 | 18.3.1 | Actualizar modelos existentes | manual | 1d | 2014-11-22 | 2014-11-22 |  |  |  |  |
| 160 | 18.3.2 | Crear nuevos modelos | manual | 1d | 2014-11-22 | 2014-11-22 |  |  |  |  |
| 161 | 18.4 | Desarrollar | manual | 1d | 2014-11-22 | 2014-11-22 |  |  |  |  |
| 162 | 18.5 | Testear | manual | 1d | 2014-11-22 | 2014-11-22 |  |  |  |  |
| 163 | 18.6 | Implementar | manual | 1d | 2014-11-22 | 2014-11-22 |  |  |  |  |
| 164 | 18.7 | Gestionar cambios | manual | 1d | 2014-11-22 | 2014-11-22 |  |  |  |  |
| 165 | 18.8 | Realizar seguimiento y control de riesgos | manual | 1d | 2014-11-22 | 2014-11-22 |  |  |  |  |
| 166 | 18.9 | Realizar Sprint Review | manual | 1d | 2014-11-22 | 2014-11-22 |  |  |  |  |
| 167 | 19 | Realizar reunión retrospectiva |  | 1d | 2014-05-03 | 2014-05-03 |  | 223d |  |  |
| 168 | 20 | **Sprint 10** |  | 22d | 2014-12-13 | 2015-01-03 | 167 |  |  |  |
| 169 | 20.1 | Realizar Sprint Planning | manual | 1d | 2014-12-13 | 2014-12-13 |  |  |  |  |
| 170 | 20.2 | Analizar y Especificar los requerimientos | manual | 1d | 2014-12-13 | 2014-12-13 |  |  |  |  |
| 171 | 20.3 | **Diseñar Solución** |  | 1d | 2014-12-13 | 2014-12-13 |  | 0d |  |  |
| 172 | 20.3.1 | Actualizar modelos existentes | manual | 1d | 2014-12-13 | 2014-12-13 |  |  |  |  |
| 173 | 20.3.2 | Crear nuevos modelos | manual | 1d | 2014-12-13 | 2014-12-13 |  |  |  |  |
| 174 | 20.4 | Desarrollar | manual | 1d | 2014-12-13 | 2014-12-13 |  |  |  |  |
| 175 | 20.5 | Testear | manual | 1d | 2014-12-13 | 2014-12-13 |  |  |  |  |
| 176 | 20.6 | Implementar | manual | 1d | 2014-12-13 | 2014-12-13 |  |  |  |  |
| 177 | 20.7 | Gestionar cambios | manual | 1d | 2014-12-13 | 2014-12-13 |  |  |  |  |
| 178 | 20.8 | Realizar seguimiento y control de riesgos | manual | 1d | 2014-12-13 | 2014-12-13 |  |  |  |  |
| 179 | 20.9 | Realizar Sprint Review | manual | 1d | 2014-12-13 | 2014-12-13 |  |  |  |  |
| 180 | 21 | Realizar reunión retrospectiva |  | 1d | 2015-01-03 | 2015-01-03 |  | -1d | 0d | start no earlier than 2015-01-03 |
| 181 | 22 | **Sprint 10** |  | 22d | 2015-01-03 | 2015-01-24 | 180 |  |  |  |
| 182 | 22.1 | Realizar Sprint Planning | manual | 1d | 2015-01-03 | 2015-01-03 |  |  |  |  |
| 183 | 22.2 | Analizar y Especificar los requerimientos | manual | 1d | 2015-01-03 | 2015-01-03 |  |  |  |  |
| 184 | 22.3 | Diseñar Solución | manual | 1d | 2015-01-03 | 2015-01-03 |  |  |  |  |
| 185 | 22.4 | Desarrollar | manual | 1d | 2015-01-03 | 2015-01-03 |  |  |  |  |
| 186 | 22.5 | Testear | manual | 1d | 2015-01-03 | 2015-01-03 |  |  |  |  |
| 187 | 22.6 | Implementar | manual | 1d | 2015-01-03 | 2015-01-03 |  |  |  |  |
| 188 | 22.7 | Gestionar cambios | manual | 1d | 2015-01-03 | 2015-01-03 |  |  |  |  |
| 189 | 22.8 | Realizar seguimiento y control de riesgos | manual | 1d | 2015-01-03 | 2015-01-03 |  |  |  |  |
| 190 | 22.9 | Realizar Sprint Review | manual | 1d | 2015-01-03 | 2015-01-03 |  |  |  |  |
| 191 | 23 | Realizar reunión retrospectiva | manual | 1d | 2015-01-24 | 2015-01-24 |  |  |  |  |

| ID | WBS | Task | Type | Duration | Start | Finish | Predecessors |
| --- | --- | --- | --- | --- | --- | --- | --- |
| 192 | 24 | **Sprint 11** |  | 21d | 2015-01-24 | 2015-02-13 | 191 |
| 193 | 24.1 | Realizar Sprint Planning | manual | 1d | 2015-01-24 | 2015-01-24 |  |
| 194 | 24.2 | Analizar y Especificar los requerimientos | manual | 1d | 2015-01-24 | 2015-01-24 |  |
| 195 | 24.3 | Diseñar Solución | manual | 1d | 2015-01-24 | 2015-01-24 |  |
| 196 | 24.4 | Desarrollar | manual | 1d | 2015-01-24 | 2015-01-24 |  |
| 197 | 24.5 | Testear | manual | 1d | 2015-01-24 | 2015-01-24 |  |
| 198 | 24.6 | Implementar | manual | 1d | 2015-01-24 | 2015-01-24 |  |
| 199 | 24.7 | Gestionar cambios | manual | 1d | 2015-01-24 | 2015-01-24 |  |
| 200 | 24.8 | Realizar seguimiento y control de riesgos | manual | 1d | 2015-01-24 | 2015-01-24 |  |
| 201 | 24.9 | Realizar Sprint Review | manual | 1d | 2015-01-24 | 2015-01-24 |  |
| 202 | 25 | Realizar reunión retrospectiva | manual | 1d | 2015-02-15 | 2015-02-15 |  |
| 203 | 26 | **Sprint 12** |  | 21d | 2015-02-15 | 2015-03-07 | 202 |
| 204 | 26.1 | Realizar Sprint Planning | manual | 1d | 2015-02-15 | 2015-02-15 |  |
| 205 | 26.2 | Analizar y Especificar los requerimientos | manual | 1d | 2015-02-15 | 2015-02-15 |  |
| 206 | 26.3 | Diseñar Solución | manual | 1d | 2015-02-15 | 2015-02-15 |  |
| 207 | 26.4 | Desarrollar | manual | 1d | 2015-02-15 | 2015-02-15 |  |
| 208 | 26.5 | Testear | manual | 1d | 2015-02-15 | 2015-02-15 |  |
| 209 | 26.6 | Implementar | manual | 1d | 2015-02-15 | 2015-02-15 |  |
| 210 | 26.7 | Gestionar cambios | manual | 1d | 2015-02-15 | 2015-02-15 |  |
| 211 | 26.8 | Realizar seguimiento y control de riesgos | manual | 1d | 2015-02-15 | 2015-02-15 |  |
| 212 | 26.9 | Realizar Sprint Review | manual | 1d | 2015-02-15 | 2015-02-15 |  |
| 213 | 27 | Realizar reunión retrospectiva | manual | 1d | 2015-03-07 | 2015-03-07 |  |
| 214 | 28 | **Sprint 13** |  | 22d | 2015-03-07 | 2015-03-28 | 213 |
| 215 | 28.1 | Realizar Sprint Planning | manual | 1d | 2015-03-07 | 2015-03-07 |  |
| 216 | 28.2 | Analizar y Especificar los requerimientos | manual | 1d | 2015-03-07 | 2015-03-07 |  |
| 217 | 28.3 | Diseñar Solución | manual | 1d | 2015-03-07 | 2015-03-07 |  |
| 218 | 28.4 | Desarrollar | manual | 1d | 2015-03-07 | 2015-03-07 |  |
| 219 | 28.5 | Testear | manual | 1d | 2015-03-07 | 2015-03-07 |  |
| 220 | 28.6 | Implementar | manual | 1d | 2015-03-07 | 2015-03-07 |  |
| 221 | 28.7 | Gestionar cambios | manual | 1d | 2015-03-07 | 2015-03-07 |  |
| 222 | 28.8 | Realizar seguimiento y control de riesgos | manual | 1d | 2015-03-07 | 2015-03-07 |  |
| 223 | 28.9 | Realizar Sprint Review | manual | 1d | 2015-03-07 | 2015-03-07 |  |
| 224 | 29 | Realizar reunión retrospectiva | manual | 1d | 2015-03-28 | 2015-03-28 |  |

| ID | WBS | Task | Type | Duration | Start | Finish | Predecessors | Total slack |
| --- | --- | --- | --- | --- | --- | --- | --- | --- |
| 225 | 30 | **Sprint 14** |  | 22d | 2015-03-28 | 2015-04-18 | 224 |  |
| 226 | 30.1 | **Realizar Presentación Final** |  | 1d | 2015-03-28 | 2015-03-28 |  | 0d |
| 227 | 30.1.1 | Preparar presentación | manual | 1d | 2015-03-28 | 2015-03-28 |  |  |
| 228 | 30.1.2 | Elaborar presentación | manual | 1d | 2015-03-28 | 2015-03-28 |  |  |
| 229 | 30.1.3 | Exponer | manual | 1d | 2015-03-28 | 2015-03-28 |  |  |
